# Proyecto Matricula

How a schedule from MS Project changed from version to version. A marks actual dates.

## Version 1 (saved 2017-05-24, file CPROY_V1.0_2017.mpp)

Note of the change: Implementacion

| ID | WBS | Task | Duration | Start | Finish | Complete | Total float |
| --- | --- | --- | --- | --- | --- | --- | --- |
| 1 | 1 | **Proyecto Matricula.TE** | 54d | 2017-05-08 A | 2017-07-20 | 16% | 0d |
| 2 | 1.1 | **Proceso de Gestion** | 54d | 2017-05-08 A | 2017-07-20 | 37% | 0d |
| 3 | 1.1.1 | **Inicio** | 54d | 2017-05-08 A | 2017-07-20 | 20% |  |
| 4 |  | Revision de la Metodologia del trabajo | 54d | 2017-05-08 A | 2017-07-20 | 20% |  |
| 5 | 1.1.2 | **Planificacion** | 9d | 2017-05-08 A | 2017-05-18 A | 100% |  |
| 6 | 1.1.2.1 | **Plan del Proyecto** | 9d | 2017-05-08 A | 2017-05-18 A | 100% |  |
| 7 | 1.1.2.1.1 | **Elaboracion del Plan del Proyecto** | 9d | 2017-05-08 A | 2017-05-18 A | 100% |  |
| 8 |  | Definir Nombre del Proyecto | 1d | 2017-05-08 A | 2017-05-08 A | 100% |  |
| 9 |  | Definir Objetivos de Proyecto | 1d | 2017-05-08 A | 2017-05-08 A | 100% |  |
| 10 |  | Identificación de Riesgos del Proyecto | 1d | 2017-05-08 A | 2017-05-08 A | 100% |  |
| 11 |  | Necesidades del Proyecto | 1d | 2017-05-08 A | 2017-05-08 A | 100% |  |
| 12 |  | Elaborar Documento de Riesgos del Proyecto | 5d | 2017-05-09 A | 2017-05-15 A | 100% |  |
| 13 |  | Elaboración de Cronograma Detallado | 5d | 2017-05-09 A | 2017-05-15 A | 100% |  |
| 14 |  | Elaborar Documento Plan de Proyecto | 5d | 2017-05-09 A | 2017-05-15 A | 100% |  |
| 15 |  | Traspaso de Información | 1d | 2017-05-18 A | 2017-05-18 A | 100% |  |
| 16 | 1.1.2.1.2 | **Revisión Interna del Plan de Proyecto** | 3d | 2017-05-16 A | 2017-05-18 A | 100% |  |
| 17 |  | Revisión de Plan de Proyecto | 1d | 2017-05-16 A | 2017-05-16 A | 100% |  |
| 18 |  | Ajustes al Plan de Proyecto | 1d | 2017-05-16 A | 2017-05-16 A | 100% |  |
| 19 |  | Elaborar Acta de REVISION INTERNA del PLAN DE PROYECTO | 1d | 2017-05-16 A | 2017-05-16 A | 100% |  |
| 20 |  | Traspaso de Información | 1d | 2017-05-18 A | 2017-05-18 A | 100% |  |
| 21 | 1.1.2.1.3 | **Gestión de Configuración** | 1d | 2017-05-08 A | 2017-05-08 A | 100% |  |
| 22 |  | Establecer Repositorio de Datos | 1d | 2017-05-08 A | 2017-05-08 A | 100% |  |
| 23 |  | Asignar Gestor de Configuración | 1d | 2017-05-08 A | 2017-05-08 A | 100% |  |
| 24 | 1.1.3 | **Asignación, Ejecución, Seguimiento y Control** | 36d | 2017-05-11 A | 2017-06-29 | 25% | 0d |
| 25 | 1.1.3.1 | **Desarrollo del Área de Proceso PP- PMC** | 7d | 2017-05-11 A | 2017-05-19 A | 100% |  |
| 26 |  | Elaborar Plantilla de Reunión Externa | 1d | 2017-05-11 A | 2017-05-11 A | 100% |  |
| 27 |  | Elaborar Plantilla de Informe de Avances | 1d | 2017-05-11 A | 2017-05-11 A | 100% |  |
| 28 |  | Elaborar Plantillas de Actas de Reunión Interna | 1d | 2017-05-12 A | 2017-05-12 A | 100% |  |
| 29 |  | Elaborar Plantilla de Registro de Riesgos | 1d | 2017-05-12 A | 2017-05-12 A | 100% |  |
| 30 |  | Elaborar Formato de Aceptación de Entregables | 1d | 2017-05-12 A | 2017-05-12 A | 100% |  |
| 31 |  | Elaborar Documento Gestión de Procesos PP-PMC | 5d | 2017-05-12 A | 2017-05-18 A | 100% |  |
| 32 |  | Traspaso de Información | 1d | 2017-05-19 A | 2017-05-19 A | 100% |  |
| 33 | 1.1.3.2 | **Desarrollo del Área de Proceso REQM** | 7d | 2017-05-29 | 2017-06-06 |  |  |
| 34 |  | Elaborar Formato de Solicitud a Cambios a Requerimientos | 1d | 2017-05-29 | 2017-05-29 |  |  |
| 35 |  | Elaborar Formato de Matriz de Trazabilidad de Requerimientos | 1d | 2017-05-29 | 2017-05-29 |  |  |
| 36 |  | Elaborar Formato de Registro de Cambios a Requerimientos | 1d | 2017-05-30 | 2017-05-30 |  |  |
| 37 |  | Elaborar Documento de Proceso de Gestión de cambios de Requerimientos | 5d | 2017-05-30 | 2017-06-05 |  |  |
| 38 |  | Traspaso de Información | 1d | 2017-06-06 | 2017-06-06 |  |  |
| 39 | 1.1.3.3 | **Desarrollo del Área de Proceso PPQA** | 5d | 2017-06-09 | 2017-06-15 |  |  |
| 40 |  | Elaborar Formato de CheckList de Aseguramiento de la Calidad | 1d | 2017-06-09 | 2017-06-09 |  |  |
| 41 |  | Elaborar Herramienta de Gestión de Aseguramiento de la Calidad | 1d | 2017-06-09 | 2017-06-09 |  |  |
| 42 |  | Elaborar Plantilla de Informe General de QA | 1d | 2017-06-12 | 2017-06-12 |  |  |
| 43 |  | Elaborar Formato de Solicitud de Control de Calidad del Producto | 1d | 2017-06-12 | 2017-06-12 |  |  |
| 44 |  | Elaborar documento de Proceso de Aseguramiento de la calidad | 3d | 2017-06-12 | 2017-06-14 |  |  |
| 45 |  | Traspaso de Información | 1d | 2017-06-15 | 2017-06-15 |  |  |
| 46 | 1.1.3.4 | **Desarrollo del Área de Proceso MA** | 6d | 2017-06-19 | 2017-06-24 |  |  |
| 47 |  | Elaborar Formato de Ficha de Métricas de Numero de N Conformidades de Producto | 1d | 2017-06-19 | 2017-06-19 |  |  |
| 48 |  | Elaborar Formato de Ficha de Métricas de Índice de Cambios de Ítems de Configuración | 1d | 2017-06-19 | 2017-06-19 |  |  |
| 49 |  | Elaborar Formato de Ficha de Métricas de Volatilidad de Requerimientos | 1d | 2017-06-19 | 2017-06-19 |  |  |
| 50 |  | Elaborar Formato de Ficha de Métricas de Exposición al Riesgo | 1d | 2017-06-20 | 2017-06-20 |  |  |
| 51 |  | Elaborar Formato de Tablero de Métricas | 1d | 2017-06-20 | 2017-06-20 |  |  |
| 52 |  | Elaborar Documento de Proceso de Medicion de Métricas | 4d | 2017-06-20 | 2017-06-23 |  |  |
| 53 |  | Traspaso de Información | 1d | 2017-06-24 | 2017-06-24 |  |  |
| 54 | 1.1.3.5 | **Desarrollo del Área de Proceso CM** | 4d | 2017-06-26 | 2017-06-29 |  |  |
| 55 |  | Elaborar Formato de Registro de Ítems de Configuración | 1d | 2017-06-26 | 2017-06-26 |  |  |
| 56 |  | Elaborar Formato de Solicitud de Accesos | 1d | 2017-06-26 | 2017-06-26 |  |  |
| 57 |  | Elaborar Documento de Proceso de Gestión de Configuración | 3d | 2017-06-26 | 2017-06-28 |  |  |
| 58 |  | Traspaso de Información | 1d | 2017-06-29 | 2017-06-29 |  |  |
| 59 | 1.1.4 | **Cierre** | 2d | 2017-07-19 | 2017-07-20 |  | 0d |
| 60 | 1.1.4.1 | **Cierre de Proyecto** | 2d | 2017-07-19 | 2017-07-20 |  | 0d |
| 61 |  | Revisión de Entregables del Proyecto | 1d | 2017-07-20 | 2017-07-20 |  |  |
| 62 |  | Elaboración del Acta de Aceptación y Cierre del Proyecto | 1d | 2017-07-19 | 2017-07-19 |  |  |
| 63 |  | Traspaso de Información | 1d | 2017-07-20 | 2017-07-20 |  |  |
| 64 | 1.1.4.2 | **Relatorio de Proyecto** | 2d | 2017-07-19 | 2017-07-20 |  |  |
| 65 |  | Elaborar Relatorio de Proyecto | 1d | 2017-07-19 | 2017-07-19 |  |  |
| 66 |  | Revisión y ajustes de Relatorio por el equipo del Proyecto | 1d | 2017-07-19 | 2017-07-19 |  |  |
| 67 |  | Revisión de Relatorio | 1d | 2017-07-20 | 2017-07-20 |  |  |
| 68 |  | Traspaso de Información | 1d | 2017-07-20 | 2017-07-20 |  |  |
| 69 | 1.2 | **Proceso de Ingeniería** | 43d | 2017-05-19 A | 2017-07-18 |  | 0d |
| 70 | 1.2.1 | **Software Matricula.TE** | 43d | 2017-05-19 A | 2017-07-18 |  | 0d |

| ID | WBS | Task | Duration | Start | Finish | Complete | Total float |
| --- | --- | --- | --- | --- | --- | --- | --- |
| 71 | 1.2.1.1 | **Requerimientos** | 11d | 2017-05-19 A | 2017-06-02 | 8% | 0d |
| 72 |  | Desarrollar Plan de Proyecto | 1d | 2017-05-19 A | 2017-05-19 | 30% |  |
| 73 |  | Elaborar Matriz de Trazabilidad de Requerimientos | 1d | 2017-06-01 | 2017-06-01 |  |  |
| 74 |  | Elaborar Lista Maestra de Requerimientos | 1d | 2017-06-01 | 2017-06-01 |  |  |
| 75 |  | Traspaso de Información | 1d | 2017-06-02 | 2017-06-02 |  |  |
| 76 | 1.2.1.2 | **Análisis** | 6d | 2017-06-05 | 2017-06-12 |  | 0d |
| 77 |  | Revisión de Matriz de Trazabilidad de Requerimientos | 1d | 2017-06-05 | 2017-06-05 |  |  |
| 78 |  | Elaborar Documento de Análisis | 2d | 2017-06-06 | 2017-06-07 |  |  |
| 79 | 1.2.1.2.3 | **Casos de Uso** | 1d | 2017-06-09 | 2017-06-11 |  | 0d |
| 80 | 1.2.1.2.3.1 | **Caso de Uso Modulo 1** | 1d | 2017-06-09 | 2017-06-11 |  | 0d |
| 81 |  | Entender la problemática actual | 1d | 2017-06-09 | 2017-06-09 |  |  |
| 82 |  | Elaborar Casos de Uso | 1d | 2017-06-09 | 2017-06-09 |  |  |
| 83 |  | Actualizar Glosario de Términos | 2d | 2017-06-10 | 2017-06-11 |  |  |
| 84 | 1.2.1.2.3.2 | **Caso de Uso Modulo 2** | 1d | 2017-06-09 | 2017-06-10 |  | 0d |
| 85 |  | Entender la problemática actual | 1d | 2017-06-09 | 2017-06-09 |  |  |
| 86 |  | Elaborar Casos de Uso | 1d | 2017-06-09 | 2017-06-09 |  |  |
| 87 |  | Actualizar Glosario de Términos | 1d | 2017-06-10 | 2017-06-10 |  |  |
| 88 | 1.2.1.2.3.3 | **Caso de Uso Modulo 3** | 1d | 2017-06-09 | 2017-06-10 |  | 0d |
| 89 |  | Entender la problemática actual | 1d | 2017-06-09 | 2017-06-09 |  |  |
| 90 |  | Elaborar Casos de Uso | 1d | 2017-06-09 | 2017-06-09 |  |  |
| 91 |  | Actualizar Glosario de Términos | 1d | 2017-06-10 | 2017-06-10 |  |  |
| 92 |  | Actualizar Matriz de Trazabilidad de Requerimientos | 1d | 2017-06-12 | 2017-06-12 |  |  |
| 93 |  | Traspaso de Información | 1d | 2017-06-12 | 2017-06-12 |  |  |
| 94 | 1.2.1.3 | **Diseño** | 2d | 2017-06-13 | 2017-06-14 |  | 0d |
| 95 |  | Elaborar Documento de Diseño | 2d | 2017-06-13 | 2017-06-14 |  |  |
| 96 |  | Actualizar Matriz de Trazabilidad de Requerimientos | 1d | 2017-06-14 | 2017-06-14 |  |  |
| 97 |  | Traspaso de Información | 1d | 2017-06-14 | 2017-06-14 |  |  |
| 98 | 1.2.1.4 | **Construcción** | 12d | 2017-06-19 | 2017-07-04 |  | 0d |
| 99 | 1.2.1.4.1 | **Modulo de Matricula** | 5d | 2017-06-19 | 2017-06-23 |  |  |
| 100 | 1.2.1.4.1.1 | **Construcción de Modulo** | 5d | 2017-06-19 | 2017-06-23 |  |  |
| 101 |  | Traspaso de Información | 1d | 2017-06-23 | 2017-06-23 |  |  |
| 102 | 1.2.1.4.2 | **Modulo de Ajustes de la Configuración** | 2d | 2017-06-24 | 2017-06-27 |  | 0d |
| 103 | 1.2.1.4.2.1 | **Construcción de Modulo** | 2d | 2017-06-24 | 2017-06-27 |  | 0d |
| 104 |  | Acceso a Panel de Configuración | 1d | 2017-06-24 | 2017-06-24 |  |  |
| 105 |  | Soporte de Idiomas Inglés y Español | 2d | 2017-06-24 | 2017-06-26 |  |  |
| 106 |  | Migración de Datos de Rutas Personalizadas | 2d | 2017-06-26 | 2017-06-27 |  |  |
| 107 |  | Traspaso de Información | 1d | 2017-06-27 | 2017-06-27 |  |  |
| 108 | 1.2.1.4.3 | **Modulo de Emision de Estado** | 4d | 2017-06-28 | 2017-07-03 |  | 0d |
| 109 | 1.2.1.4.3.1 | **Construcción de Modulo** | 4d | 2017-06-28 | 2017-07-03 |  |  |
| 110 |  | Traspaso de Información | 1d | 2017-07-01 | 2017-07-01 |  |  |
| 111 | 1.2.1.4.4 | **Seguridad** | 9d | 2017-06-20 | 2017-06-30 |  |  |
| 112 |  | Control de la Piratería de la Aplicación | 9d | 2017-06-20 | 2017-06-30 |  |  |
| 113 |  | Ahorro de Energía | 9d | 2017-06-20 | 2017-06-30 |  |  |
| 114 |  | Muestreo de Licencia | 9d | 2017-06-20 | 2017-06-30 |  |  |
| 115 |  | Actualizar Matriz de Trazabilidad de Requerimientos | 1d | 2017-07-03 | 2017-07-03 |  |  |
| 116 |  | Traspaso de Información | 1d | 2017-07-04 | 2017-07-04 |  |  |
| 117 | 1.2.1.5 | **Pruebas** | 6d | 2017-07-05 | 2017-07-12 |  | 0d |
| 118 | 1.2.1.5.1 | **Pruebas Internas** | 3d | 2017-07-05 | 2017-07-07 |  | 0d |
| 119 | 1.2.1.5.1.1 | **Modulo de Matricula** | 1d | 2017-07-05 | 2017-07-05 |  |  |
| 120 |  | Elaborar Pruebas de Modulo | 1d | 2017-07-05 | 2017-07-05 |  |  |
| 121 |  | Elaborar Informe de Prueba | 1d | 2017-07-05 | 2017-07-05 |  |  |
| 122 |  | Traspaso de Información | 1d | 2017-07-05 | 2017-07-05 |  |  |
| 123 | 1.2.1.5.1.2 | **Modulo de Ajustes de la Configuración** | 1d | 2017-07-06 | 2017-07-06 |  |  |
| 124 |  | Elaborar Pruebas de Modulo | 1d | 2017-07-06 | 2017-07-06 |  |  |
| 125 |  | Elaborar Informe de Prueba | 1d | 2017-07-06 | 2017-07-06 |  |  |
| 126 |  | Traspaso de Información | 1d | 2017-07-06 | 2017-07-06 |  |  |
| 127 | 1.2.1.5.1.3 | **Modulo de Emision de Estado** | 1d | 2017-07-07 | 2017-07-07 |  |  |
| 128 |  | Elaborar Pruebas de Modulo | 1d | 2017-07-07 | 2017-07-07 |  |  |
| 129 |  | Elaborar Informe de Prueba | 1d | 2017-07-07 | 2017-07-07 |  |  |
| 130 |  | Traspaso de Información | 1d | 2017-07-07 | 2017-07-07 |  |  |
| 131 | 1.2.1.5.2 | **Pruebas Externas** | 2d | 2017-07-08 | 2017-07-11 |  | 0d |
| 132 | 1.2.1.5.2.1 | **Módulo de Matricula** | 1d | 2017-07-08 | 2017-07-08 |  |  |
| 133 |  | Elaborar Pruebas de Modulo | 1d | 2017-07-08 | 2017-07-08 |  |  |
| 134 |  | Elaborar Informe de Prueba | 1d | 2017-07-08 | 2017-07-08 |  |  |
| 135 |  | Traspaso de Información | 1d | 2017-07-08 | 2017-07-08 |  |  |
| 136 | 1.2.1.5.2.2 | **Módulo de Ajustes de la Configuración** | 1d | 2017-07-10 | 2017-07-10 |  | 0d |
| 137 |  | Elaborar Pruebas de Modulo | 1d | 2017-07-10 | 2017-07-10 |  |  |
| 138 |  | Elaborar Informe de Prueba | 1d | 2017-07-10 | 2017-07-10 |  |  |
| 139 |  | Traspaso de Información | 1d | 2017-07-10 | 2017-07-10 |  |  |
| 140 | 1.2.1.5.2.3 | **Módulo de Emision de Estado** | 1d | 2017-07-11 | 2017-07-11 |  | 0d |

| ID | WBS | Task | Duration | Start | Finish | Total float |
| --- | --- | --- | --- | --- | --- | --- |
| 141 |  | Elaborar Pruebas de Modulo | 1d | 2017-07-11 | 2017-07-11 |  |
| 142 |  | Elaborar Informe de Prueba | 1d | 2017-07-11 | 2017-07-11 |  |
| 143 |  | Traspaso de Información | 1d | 2017-07-11 | 2017-07-11 |  |
| 144 |  | Elaborar Matriz de Trazabilidad de Requerimientos Final | 1d | 2017-07-12 | 2017-07-12 |  |
| 145 |  | Traspaso de Información | 1d | 2017-07-12 | 2017-07-12 |  |
| 146 | 1.2.1.6 | **Implementación** | 3d | 2017-07-14 | 2017-07-18 |  |
| 147 | 1.2.1.6.1 | **Guía de Usuario** | 3d | 2017-07-14 | 2017-07-18 |  |
| 148 |  | Elaborar Guía de Instalación | 1d | 2017-07-14 | 2017-07-14 |  |
| 149 |  | Elaborar Manual de Usuario con todos los módulos actualizados | 1d | 2017-07-15 | 2017-07-15 |  |
| 150 |  | Traspaso de Información | 1d | 2017-07-17 | 2017-07-17 |  |
| 151 | 1.2.1.6.2 | **Preparación de Instalador** | 1d | 2017-07-18 | 2017-07-18 |  |
| 152 |  | Creación del archivo de instalación | 1d | 2017-07-18 | 2017-07-18 |  |
| 153 | 1.3 | **Inducción de personal** | 4d | 2017-06-16 | 2017-06-21 | 0d |
| 154 |  | Establecer personal para inducción | 1d | 2017-06-16 | 2017-06-16 |  |
| 155 |  | Realizar inducción al personal | 1d | 2017-06-17 | 2017-06-17 |  |
| 156 |  | Verificar proceso de inducción | 1d | 2017-06-19 | 2017-06-19 |  |
| 157 |  | Elaborar Certificado de Inducción de Personal | 1d | 2017-06-19 | 2017-06-19 |  |
| 158 |  | Traspaso de Información | 1d | 2017-06-20 | 2017-06-20 |  |
| 159 |  | Pasar a área de Desarrollo a Personal Capacitado | 1d | 2017-06-21 | 2017-06-21 |  |
| 160 | 1.4 | **Proceso de Aseguramiento de la Calidad del Proyecto** | 48d | 2017-05-15 | 2017-07-19 | 0d |
| 161 | 1.4.1 | **Primera Revisión** | 12d | 2017-05-15 | 2017-05-30 | 0d |
| 162 |  | Elaborar Herramienta de Gestion de Aseguramiento de la Calidad | 11d | 2017-05-15 | 2017-05-29 |  |
| 163 |  | Elaborar CheckList de Aseguramiento de la Calidad | 11d | 2017-05-15 | 2017-05-29 |  |
| 164 |  | Traspaso de Información | 1d | 2017-05-30 | 2017-05-30 |  |
| 165 | 1.4.2 | **Segunda Revisión** | 12d | 2017-06-14 | 2017-06-29 | 0d |
| 166 |  | Elaborar Herramienta de Gestion de Aseguramiento de la Calidad | 11d | 2017-06-14 | 2017-06-28 |  |
| 167 |  | Actualizar CheckList de Aseguramiento de la Calidad | 11d | 2017-06-14 | 2017-06-28 |  |
| 168 |  | Traspaso de Información | 1d | 2017-06-29 | 2017-06-29 |  |
| 169 | 1.4.3 | **Tercera Revisión** | 9d | 2017-07-06 | 2017-07-18 | 0d |
| 170 |  | Elaborar Herramienta de Gestion de Aseguramiento de la Calidad | 8d | 2017-07-06 | 2017-07-17 |  |
| 171 |  | Actualizar CheckList de Aseguramiento de la Calidad | 8d | 2017-07-06 | 2017-07-17 |  |
| 172 |  | Traspaso de Información | 1d | 2017-07-18 | 2017-07-18 |  |
| 173 |  | Elaborar Matriz de Seguimiento del Proyecto | 1d | 2017-07-19 | 2017-07-19 |  |
| 174 |  | Elaborar Informe de Revisión General del QA | 1d | 2017-07-19 | 2017-07-19 |  |
| 175 |  | Traspaso de Información | 1d | 2017-07-19 | 2017-07-19 |  |
| 176 | 1.5 | **Reuniones Internas** | 51d | 2017-05-08 | 2017-07-17 | 0d |
| 177 | 1.5.1 | **Reunión Inicial** | 1d | 2017-05-08 | 2017-05-08 |  |
| 178 |  | Elaborar Acta de Reunión | 1d | 2017-05-08 | 2017-05-08 |  |
| 179 |  | Traspaso de Información | 1d | 2017-05-08 | 2017-05-08 |  |
| 180 | 1.5.2 | **Reunión Quincenal 1** | 1d | 2017-05-25 | 2017-05-25 |  |
| 181 |  | Elaborar Acta de Reunión | 1d | 2017-05-24 | 2017-05-24 |  |
| 182 |  | Traspaso de Información | 1d | 2017-05-24 | 2017-05-24 |  |
| 183 | 1.5.3 | **Reunión Quincenal 2** | 1d | 2017-06-09 | 2017-06-09 |  |
| 184 |  | Elaborar Acta de Reunión | 1d | 2017-06-09 | 2017-06-09 |  |
| 185 |  | Traspaso de Información | 1d | 2017-06-09 | 2017-06-09 |  |
| 186 | 1.5.4 | **Reunión Quincenal 3** | 1d | 2017-06-26 | 2017-06-26 |  |
| 187 |  | Elaborar Acta de Reunión | 1d | 2017-06-26 | 2017-06-26 |  |
| 188 |  | Traspaso de Información | 1d | 2017-06-26 | 2017-06-26 |  |
| 189 | 1.5.5 | **Reunión Quincenal 4** | 1d | 2017-07-11 | 2017-07-11 |  |
| 190 |  | Elaborar Acta de Reunión | 1d | 2017-07-11 | 2017-07-11 |  |
| 191 |  | Traspaso de Información | 1d | 2017-07-11 | 2017-07-11 |  |
| 192 | 1.5.6 | **Reunión Final** | 1d | 2017-07-17 | 2017-07-17 |  |
| 193 |  | Elaborar Acta de Reunión | 1d | 2017-07-17 | 2017-07-17 |  |
| 194 |  | Traspaso de Información | 1d | 2017-07-17 | 2017-07-17 |  |
| 195 | 1.6 | **Reuniones Externas - CLIENTE** | 42d | 2017-05-24 | 2017-07-20 | 0d |
| 196 | 1.6.1 | **Primera Presentación del Proyecto** | 1d | 2017-05-24 | 2017-05-24 | 0d |
| 197 |  | Reunión Externa con Profesor | 1d | 2017-05-24 | 2017-05-24 |  |
| 198 |  | Acta de Reunión con acuerdos tomados | 1d | 2017-05-24 | 2017-05-24 |  |
| 199 |  | Traspaso de Información | 1d | 2017-05-24 | 2017-05-24 |  |
| 200 | 1.6.2 | **Segunda Presentación del Proyecto** | 1d | 2017-06-22 | 2017-06-22 | 0d |
| 201 |  | Reunión Externa con Profesor | 1d | 2017-06-22 | 2017-06-22 |  |
| 202 |  | Acta de Reunión con acuerdos tomados | 1d | 2017-06-22 | 2017-06-22 |  |
| 203 |  | Traspaso de Información | 1d | 2017-06-22 | 2017-06-22 |  |
| 204 | 1.6.3 | **Tercera Presentación del Proyecto** | 1d | 2017-07-20 | 2017-07-20 | 0d |
| 205 |  | Kick Off Meeting con Profesor | 1d | 2017-07-20 | 2017-07-20 |  |
| 206 |  | Acta de Reunión con acuerdos tomados | 1d | 2017-07-20 | 2017-07-20 |  |
| 207 |  | Traspaso de Información | 1d | 2017-07-20 | 2017-07-20 |  |

## Version 2 (saved 2017-07-10, file CPROY_V2.0_2017.mpp)

Note of the change: Implementacion

Last finish 2017-07-20 → 2017-07-22 (+2d). Complete tasks 21 → 58.

Added:

| ID | Task | Duration | Start | Finish | Resources |
| --- | --- | --- | --- | --- | --- |
| 94 | Login | 1d | 2017-07-05 | 2017-07-05 | Salinas |
| 95 | Visualizacion de Cursos Disponibles | 2d | 2017-07-05 | 2017-07-06 | Chira |
| 96 | Asignacion de Horarios | 1d | 2017-07-06 | 2017-07-06 | Salinas |
| 97 | Emision de Reportes de Notas | 1d | 2017-07-07 | 2017-07-07 | Chira |
| 98 | Emision de Reportes de Matricula | 1d | 2017-07-08 | 2017-07-08 | Salinas |
| 102 | Login | 1d | 2017-07-10 | 2017-07-10 | Chira |
| 103 | Visualizacion Cursos Disponibles | 2d | 2017-07-10 | 2017-07-11 | Chira; Salinas |
| 104 | Selección de Cursos | 1d | 2017-07-11 | 2017-07-11 | Salinas |
| 105 | Emision de reportes de Notas | 1d | 2017-07-12 | 2017-07-12 | Salinas; Chira |
| 106 | Visualizacion de Pensiones | 1d | 2017-07-13 | 2017-07-13 | Chira |
| 124 | Elaborar Manual de Sistema | 1d | 2017-07-17 | 2017-07-17 | Chira |
| 132 | Elaborar Plan de Implementación | 1d | 2017-07-18 | 2017-07-18 | Salinas |

Removed: 52 Elaborar Documento de Proceso de Medicion de Métricas; 83 Actualizar Glosario de Términos; 84 Caso de Uso Modulo 2; 85 Entender la problemática actual; 86 Elaborar Casos de Uso; 87 Actualizar Glosario de Términos; 91 Actualizar Glosario de Términos; 102 Modulo de Ajustes de la Configuración; 103 Construcción de Modulo; 104 Acceso a Panel de Configuración; 105 Soporte de Idiomas Inglés y Español; 106 Migración de Datos de Rutas Personalizadas; 111 Seguridad; 112 Control de la Piratería de la Aplicación; 113 Ahorro de Energía; 114 Muestreo de Licencia; 123 Modulo de Ajustes de la Configuración; 124 Elaborar Pruebas de Modulo; 132 Módulo de Matricula; 133 Elaborar Pruebas de Modulo; 134 Elaborar Informe de Prueba; 135 Traspaso de Información; 136 Módulo de Ajustes de la Configuración; 137 Elaborar Pruebas de Modulo; 138 Elaborar Informe de Prueba; 139 Traspaso de Información; 141 Elaborar Pruebas de Modulo; 142 Elaborar Informe de Prueba; 143 Traspaso de Información; 151 Preparación de Instalador; 152 Creación del archivo de instalación; 165 Segunda Revisión; 166 Elaborar Herramienta de Gestion de Aseguramiento de la Calidad; 167 Actualizar CheckList de Aseguramiento de la Calidad; 168 Traspaso de Información; 169 Tercera Revisión; 170 Elaborar Herramienta de Gestion de Aseguramiento de la Calidad; 171 Actualizar CheckList de Aseguramiento de la Calidad; 172 Traspaso de Información; 192 Reunión Final; 193 Elaborar Acta de Reunión; 194 Traspaso de Información

Changed:

| ID | Task | Start | Finish | Duration | Complete | Total float | Other |
| --- | --- | --- | --- | --- | --- | --- | --- |
| 1 | **Proyecto Matricula.TE** |  | 2017-07-20 → 2017-07-22 (+2d) | 54d → 66d | 16% → 50% |  |  |
| 2 | **Proceso de Gestion** |  | 2017-07-20 → 2017-07-19 (-1d) | 54d → 63d | 37% → 89% |  |  |
| 3 | **Inicio** |  | 2017-07-20 → 2017-05-08 (-73d) | 54d → 1d | 20% → 99% | none → 0d |  |
| 4 | Revision de la Metodologia del trabajo |  | 2017-07-20 → 2017-05-08 A (-73d) | 54d → 1d | 20% → 100% |  |  |
| 5 | **Planificacion** |  | 2017-05-18 A → 2017-05-17 A (-1d) |  |  |  |  |
| 6 | **Plan del Proyecto** |  | 2017-05-18 A → 2017-05-17 A (-1d) |  |  |  |  |
| 7 | **Elaboracion del Plan del Proyecto** |  | 2017-05-18 A → 2017-05-16 A (-2d) | 9d → 8d |  |  |  |
| 14 | Elaborar Documento Plan de Proyecto |  |  |  |  |  | resources Chira; Huaroto; Salinas → Chira |
| 15 | Traspaso de Información | 2017-05-18 A → 2017-05-16 A (-2d) | 2017-05-18 A → 2017-05-16 A (-2d) |  |  |  |  |
| 16 | **Revisión Interna del Plan de Proyecto** |  | 2017-05-18 A → 2017-05-17 A (-1d) | 3d → 2d |  |  |  |
| 17 | Revisión de Plan de Proyecto por el equipo del Proyecto |  |  |  |  |  | was named Revisión de Plan de Proyecto |
| 20 | Traspaso de Información | 2017-05-18 A → 2017-05-17 A (-1d) | 2017-05-18 A → 2017-05-17 A (-1d) |  |  |  |  |
| 21 | **Gestión de Configuración** | 2017-05-08 A → 2017-05-17 A (+9d) | 2017-05-08 A → 2017-05-17 A (+9d) |  |  |  |  |
| 22 | Establecer Repositorio de Datos | 2017-05-08 A → 2017-05-17 A (+9d) | 2017-05-08 A → 2017-05-17 A (+9d) |  |  |  |  |
| 23 | Asignar Gestor de Configuración | 2017-05-08 A → 2017-05-17 A (+9d) | 2017-05-08 A → 2017-05-17 A (+9d) |  |  |  |  |
| 24 | **Asignación, Ejecución, Seguimiento y Control** | 2017-05-11 A → 2017-05-17 A (+6d) | 2017-06-29 → 2017-06-14 A (-15d) | 36d → 25d | 25% → 100% | 0d → none |  |
| 25 | **Desarrollo del Área de Proceso PP- PMC** | 2017-05-11 A → 2017-05-17 A (+6d) |  | 7d → 3d |  |  |  |
| 26 | Elaborar Plantilla de Reunión Externa Mensual | 2017-05-11 A → 2017-05-17 A (+6d) | 2017-05-11 A → 2017-05-17 A (+6d) |  |  |  | was named Elaborar Plantilla de Reunión Externa |
| 27 | Elaborar Plantilla de Informe de Avances Quincenales | 2017-05-11 A → 2017-05-17 A (+6d) | 2017-05-11 A → 2017-05-17 A (+6d) |  |  |  | was named Elaborar Plantilla de Informe de Avances; resources Huaroto → Salinas |
| 28 | Elaborar Plantillas de Actas de Reunión Interna Quincenal | 2017-05-12 A → 2017-05-17 A (+5d) | 2017-05-12 A → 2017-05-17 A (+5d) |  |  |  | was named Elaborar Plantillas de Actas de Reunión Interna |
| 29 | Elaborar Plantilla de Gestion de Riesgos | 2017-05-12 A → 2017-05-17 A (+5d) | 2017-05-12 A → 2017-05-17 A (+5d) |  |  |  | was named Elaborar Plantilla de Registro de Riesgos |
| 30 | Elaborar Formato de Aceptación de Entregables | 2017-05-12 A → 2017-05-17 A (+5d) | 2017-05-12 A → 2017-05-17 A (+5d) |  |  |  |  |
| 31 | Elaborar Documento de Proceso de Gestión de Procesos PP-PMC | 2017-05-12 A → 2017-05-18 A (+6d) |  | 5d → 1d |  |  | was named Elaborar Documento Gestión de Procesos PP-PMC |
| 33 | **Desarrollo del Área de Proceso REQM** | 2017-05-29 → 2017-05-25 A (-4d) | 2017-06-06 → 2017-05-27 A (-10d) | 7d → 3d | 0% → 100% |  |  |
| 34 | Elaborar Formato de Solicitud a Cambios a Requerimientos | 2017-05-29 → 2017-05-25 A (-4d) | 2017-05-29 → 2017-05-25 A (-4d) |  | 0% → 100% |  |  |
| 35 | Elaborar Formato de Matriz de Trazabilidad de Requerimientos | 2017-05-29 → 2017-05-25 A (-4d) | 2017-05-29 → 2017-05-25 A (-4d) |  | 0% → 100% |  |  |
| 36 | Elaborar Formato de Registro de Cambios a Requerimientos | 2017-05-30 → 2017-05-25 A (-5d) | 2017-05-30 → 2017-05-25 A (-5d) |  | 0% → 100% |  | resources Salinas → Huaroto |
| 37 | Elaborar Documento de Proceso de Gestión de cambios de Requerimientos | 2017-05-30 → 2017-05-26 A (-4d) | 2017-06-05 → 2017-05-26 A (-10d) | 5d → 1d | 0% → 100% |  | resources Chira → Huaroto |
| 38 | Traspaso de Información | 2017-06-06 → 2017-05-27 A (-10d) | 2017-06-06 → 2017-05-27 A (-10d) |  | 0% → 100% |  |  |
| 39 | **Desarrollo del Área de Proceso PPQA** | 2017-06-09 → 2017-05-30 A (-10d) | 2017-06-15 → 2017-06-02 A (-13d) | 5d → 4d | 0% → 100% |  |  |
| 40 | Elaborar Formato de CheckList de Aseguramiento de la Calidad | 2017-06-09 → 2017-05-30 A (-10d) | 2017-06-09 → 2017-05-30 A (-10d) |  | 0% → 100% |  | resources Huaroto → Salinas |
| 41 | Elaborar Herramienta de Gestión de Aseguramiento de la Calidad | 2017-06-09 → 2017-05-31 A (-9d) | 2017-06-09 → 2017-05-31 A (-9d) |  | 0% → 100% |  | resources Huaroto → Salinas |
| 42 | Elaborar Plantilla de Informe General de QA | 2017-06-12 → 2017-05-31 A (-12d) | 2017-06-12 → 2017-05-31 A (-12d) |  | 0% → 100% |  |  |
| 43 | Elaborar Formato de Solicitud de Control de Calidad del Producto | 2017-06-12 → 2017-06-01 A (-11d) | 2017-06-12 → 2017-06-01 A (-11d) |  | 0% → 100% |  |  |
| 44 | Elaborar documento de Proceso de Aseguramiento de la calidad | 2017-06-12 → 2017-06-01 A (-11d) | 2017-06-14 → 2017-06-01 A (-13d) | 3d → 1d | 0% → 100% |  | resources Chira → Salinas |
| 45 | Traspaso de Información | 2017-06-15 → 2017-06-02 A (-13d) | 2017-06-15 → 2017-06-02 A (-13d) |  | 0% → 100% |  |  |
| 46 | **Desarrollo del Área de Proceso MA** | 2017-06-19 → 2017-06-03 A (-16d) | 2017-06-24 → 2017-06-08 A (-16d) | 6d → 5d | 0% → 100% |  |  |
| 47 | Elaborar Formato de Ficha de Métricas de Numero de N Conformidades de Producto | 2017-06-19 → 2017-06-03 A (-16d) | 2017-06-19 → 2017-06-03 A (-16d) |  | 0% → 100% |  | resources Huaroto → Chira |
| 48 | Elaborar Formato de Ficha de Métricas de Índice de Cambios de Ítems de Configuración | 2017-06-19 → 2017-06-03 A (-16d) | 2017-06-19 → 2017-06-03 A (-16d) |  | 0% → 100% |  | resources Huaroto → Chira |
| 49 | Elaborar Formato de Ficha de Métricas de Volatilidad de Requerimientos | 2017-06-19 → 2017-06-05 A (-14d) | 2017-06-19 → 2017-06-05 A (-14d) |  | 0% → 100% |  | resources Salinas → Chira |
| 50 | Elaborar Formato de Ficha de Métricas de Exposición al Riesgo | 2017-06-20 → 2017-06-05 A (-15d) | 2017-06-20 → 2017-06-05 A (-15d) |  | 0% → 100% |  | resources Salinas → Chira |
| 51 | Elaborar Formato de Tablero de Métricas | 2017-06-20 → 2017-06-06 A (-14d) | 2017-06-20 → 2017-06-06 A (-14d) |  | 0% → 100% |  | resources Salinas → Salinas; Chira; Huaroto |
| 52 | Traspaso de Información | 2017-06-24 → 2017-06-08 A (-16d) | 2017-06-24 → 2017-06-08 A (-16d) |  | 0% → 100% |  |  |
| 53 | **Desarrollo del Área de Proceso CM** | 2017-06-26 → 2017-06-12 A (-14d) | 2017-06-29 → 2017-06-14 A (-15d) | 4d → 3d | 0% → 100% |  |  |
| 54 | Elaborar Formato de Registro de Ítems de Configuración | 2017-06-26 → 2017-06-12 A (-14d) | 2017-06-26 → 2017-06-12 A (-14d) |  | 0% → 100% |  |  |
| 55 | Elaborar Formato de Solicitud de Accesos | 2017-06-26 → 2017-06-12 A (-14d) | 2017-06-26 → 2017-06-12 A (-14d) |  | 0% → 100% |  | resources Salinas → Huaroto |
| 56 | Elaborar Documento de Proceso de Gestión de Configuración | 2017-06-26 → 2017-06-13 A (-13d) | 2017-06-28 → 2017-06-13 A (-15d) | 3d → 1d | 0% → 100% |  | resources Chira → Huaroto |
| 57 | Traspaso de Información | 2017-06-29 → 2017-06-14 A (-15d) | 2017-06-29 → 2017-06-14 A (-15d) |  | 0% → 100% |  |  |
| 58 | **Cierre** |  | 2017-07-20 → 2017-07-19 (-1d) | 2d → 1d |  |  |  |
| 59 | **Cierre de Proyecto** |  | 2017-07-20 → 2017-07-19 (-1d) | 2d → 1d |  |  |  |
| 60 | Revisión de Entregables del Proyecto | 2017-07-20 → 2017-07-19 (-1d) | 2017-07-20 → 2017-07-19 (-1d) |  |  |  |  |
| 62 | Traspaso de Información | 2017-07-20 → 2017-07-19 (-1d) | 2017-07-20 → 2017-07-19 (-1d) |  |  |  |  |
| 63 | **Relatorio de Proyecto** |  | 2017-07-20 → 2017-07-19 (-1d) | 2d → 1d |  | none → 0d |  |
| 66 | Revisión de Relatorio | 2017-07-20 → 2017-07-19 (-1d) | 2017-07-20 → 2017-07-19 (-1d) |  |  |  |  |
| 67 | Traspaso de Información | 2017-07-20 → 2017-07-19 (-1d) | 2017-07-20 → 2017-07-19 (-1d) |  |  |  |  |
| 68 | **Proceso de Ingeniería** | 2017-05-19 A → 2017-05-17 (-2d) |  | 43d → 54d | 0% → 31% |  |  |
| 69 | **Software Matricula.TE** | 2017-05-19 A → 2017-05-17 (-2d) |  | 43d → 54d | 0% → 31% | 0d → none |  |
| 70 | **Requerimientos** | 2017-05-19 A → 2017-06-22 A (+34d) | 2017-06-02 → 2017-06-23 A (+21d) | 11d → 2d | 8% → 100% | 0d → none |  |
| 71 | Desarrollar Plan de Proyecto | 2017-05-19 A → 2017-06-22 A (+34d) | 2017-05-19 → 2017-06-22 A (+34d) |  | 30% → 100% |  |  |
| 72 | Elaborar Matriz de Trazabilidad de Requerimientos | 2017-06-01 → 2017-06-23 A (+22d) | 2017-06-01 → 2017-06-23 A (+22d) |  | 0% → 100% |  |  |
| 73 | Elaborar Lista Maestra de Requerimientos | 2017-06-01 → 2017-06-23 A (+22d) | 2017-06-01 → 2017-06-23 A (+22d) |  | 0% → 100% |  |  |
| 74 | Traspaso de Información | 2017-06-02 → 2017-06-23 A (+21d) | 2017-06-02 → 2017-06-23 A (+21d) |  | 0% → 100% |  |  |
| 75 | **Análisis** | 2017-06-05 → 2017-06-26 A (+21d) | 2017-06-12 → 2017-06-30 A (+18d) | 6d → 5d | 0% → 100% | 0d → none |  |
| 76 | Revisión de Matriz de Trazabilidad de Requerimientos | 2017-06-05 → 2017-06-26 A (+21d) | 2017-06-05 → 2017-06-26 A (+21d) |  | 0% → 100% |  |  |
| 77 | Elaborar Documento de Análisis | 2017-06-06 → 2017-06-26 A (+20d) | 2017-06-07 → 2017-06-26 A (+19d) | 2d → 1d | 0% → 100% |  |  |
| 78 | **Casos de Uso** | 2017-06-09 → 2017-06-27 A (+18d) | 2017-06-11 → 2017-06-28 A (+17d) | 1d → 2d | 0% → 100% | 0d → none |  |
| 79 | **Caso de Uso Modulo Administrativo** | 2017-06-09 → 2017-06-27 A (+18d) | 2017-06-11 → 2017-06-27 A (+16d) |  | 0% → 100% | 0d → none | was named Caso de Uso Modulo 1 |
| 80 | Entender la problemática actual | 2017-06-09 → 2017-06-27 A (+18d) | 2017-06-09 → 2017-06-27 A (+18d) |  | 0% → 100% |  |  |
| 81 | Elaborar Casos de Uso | 2017-06-09 → 2017-06-27 A (+18d) | 2017-06-09 → 2017-06-27 A (+18d) |  | 0% → 100% |  |  |
| 82 | **Caso de Uso Modulo de Alumnos** | 2017-06-09 → 2017-06-28 A (+19d) | 2017-06-10 → 2017-06-28 A (+18d) |  | 0% → 100% | 0d → none | was named Caso de Uso Modulo 3 |

| ID | Task | Start | Finish | Duration | Complete | Total float | Other |
| --- | --- | --- | --- | --- | --- | --- | --- |
| 83 | Entender la problemática actual | 2017-06-09 → 2017-06-28 A (+19d) | 2017-06-09 → 2017-06-28 A (+19d) |  | 0% → 100% |  |  |
| 84 | Elaborar Casos de Uso | 2017-06-09 → 2017-06-28 A (+19d) | 2017-06-09 → 2017-06-28 A (+19d) |  | 0% → 100% |  |  |
| 85 | Actualizar Matriz de Trazabilidad de Requerimientos | 2017-06-12 → 2017-06-29 A (+17d) | 2017-06-12 → 2017-06-29 A (+17d) |  | 0% → 100% |  |  |
| 86 | Traspaso de Información | 2017-06-12 → 2017-06-30 A (+18d) | 2017-06-12 → 2017-06-30 A (+18d) |  | 0% → 100% |  |  |
| 87 | **Diseño** | 2017-06-13 → 2017-07-03 A (+20d) | 2017-06-14 → 2017-07-04 A (+20d) |  | 0% → 100% | 0d → none |  |
| 88 | Elaborar Documento de Diseño | 2017-06-13 → 2017-07-03 A (+20d) | 2017-06-14 → 2017-07-03 A (+19d) | 2d → 1d | 0% → 100% |  |  |
| 89 | Actualizar Matriz de Trazabilidad de Requerimientos | 2017-06-14 → 2017-07-03 A (+19d) | 2017-06-14 → 2017-07-03 A (+19d) |  | 0% → 100% |  |  |
| 90 | Traspaso de Información | 2017-06-14 → 2017-07-04 A (+20d) | 2017-06-14 → 2017-07-04 A (+20d) |  | 0% → 100% |  |  |
| 91 | **Construcción** | 2017-06-19 → 2017-07-05 (+16d) | 2017-07-04 → 2017-07-13 (+9d) | 12d → 8d |  |  |  |
| 92 | **Modulo Administrativo** | 2017-06-19 → 2017-07-05 (+16d) | 2017-06-23 → 2017-07-08 (+15d) | 5d → 4d |  | none → 0d | was named Modulo de Matricula |
| 93 | **Construcción de Modulo** | 2017-06-19 → 2017-07-05 (+16d) | 2017-06-23 → 2017-07-08 (+15d) | 5d → 4d |  | none → 0d |  |
| 99 | Traspaso de Información | 2017-06-23 → 2017-07-08 (+15d) | 2017-06-23 → 2017-07-08 (+15d) |  |  |  |  |
| 100 | **Modulo de Alumnos** | 2017-06-28 → 2017-07-10 (+12d) | 2017-07-03 → 2017-07-13 (+10d) |  |  |  | was named Modulo de Emision de Estado |
| 101 | **Construcción de Modulo** | 2017-06-28 → 2017-07-10 (+12d) | 2017-07-03 → 2017-07-13 (+10d) |  |  | none → 0d |  |
| 107 | Traspaso de Información | 2017-07-01 → 2017-07-13 (+12d) | 2017-07-01 → 2017-07-13 (+12d) |  |  |  |  |
| 108 | Actualizar Matriz de Trazabilidad de Requerimientos | 2017-07-03 → 2017-07-13 (+10d) | 2017-07-03 → 2017-07-13 (+10d) |  |  |  |  |
| 109 | Traspaso de Información | 2017-07-04 → 2017-07-13 (+9d) | 2017-07-04 → 2017-07-13 (+9d) |  |  |  |  |
| 110 | **Pruebas** | 2017-07-05 → 2017-07-14 (+9d) | 2017-07-12 → 2017-07-17 (+5d) | 6d → 3d |  |  |  |
| 111 | **Pruebas Funcionales** | 2017-07-05 → 2017-07-14 (+9d) | 2017-07-07 → 2017-07-14 (+7d) | 3d → 1d |  |  | was named Pruebas Internas |
| 112 | **Modulo de Matricula** | 2017-07-05 → 2017-07-14 (+9d) | 2017-07-05 → 2017-07-14 (+9d) |  |  | none → 0d |  |
| 113 | Elaborar Prueba funcional del Modulo | 2017-07-05 → 2017-07-14 (+9d) | 2017-07-05 → 2017-07-14 (+9d) |  |  |  | was named Elaborar Pruebas de Modulo |
| 114 | Elaborar Informe de Prueba | 2017-07-05 → 2017-07-14 (+9d) | 2017-07-05 → 2017-07-14 (+9d) |  |  |  |  |
| 115 | Traspaso de Información | 2017-07-05 → 2017-07-14 (+9d) | 2017-07-05 → 2017-07-14 (+9d) |  |  |  |  |
| 116 | **Modulo de Emision de Estado** | 2017-07-07 → 2017-07-14 (+7d) | 2017-07-07 → 2017-07-14 (+7d) |  |  | none → 0d |  |
| 117 | Elaborar Prueba funcional de Modulo | 2017-07-07 → 2017-07-14 (+7d) | 2017-07-07 → 2017-07-14 (+7d) |  |  |  | was named Elaborar Pruebas de Modulo |
| 118 | Elaborar Informe de Prueba | 2017-07-07 → 2017-07-14 (+7d) | 2017-07-07 → 2017-07-14 (+7d) |  |  |  |  |
| 119 | Traspaso de Información | 2017-07-07 → 2017-07-14 (+7d) | 2017-07-07 → 2017-07-14 (+7d) |  |  |  |  |
| 120 | **Pruebas de Sistema** | 2017-07-08 → 2017-07-15 (+7d) | 2017-07-11 → 2017-07-15 (+4d) | 2d → 1d |  |  | was named Pruebas Externas |
| 121 | Elaborar Pruebas de Sistema | 2017-07-11 → 2017-07-15 (+4d) | 2017-07-11 → 2017-07-15 (+4d) |  |  | 0d → 2d | was named Módulo de Emision de Estado; constraint none → start no earlier than 2017-07-15 |
| 122 | Elaborar Informe de Prueba | 2017-07-06 → 2017-07-15 (+9d) | 2017-07-06 → 2017-07-15 (+9d) |  |  |  | resources Huaroto → Chira; Huaroto; Salinas |
| 123 | Traspaso de Información | 2017-06-27 → 2017-07-15 (+18d) | 2017-06-27 → 2017-07-15 (+18d) |  |  |  | resources Chira → Chira; Huaroto; Salinas |
| 125 | Elaborar Matriz de Trazabilidad de Requerimientos Final | 2017-07-12 → 2017-07-17 (+5d) | 2017-07-12 → 2017-07-17 (+5d) |  |  |  |  |
| 126 | Traspaso de Información | 2017-07-12 → 2017-07-17 (+5d) | 2017-07-12 → 2017-07-17 (+5d) |  |  |  |  |
| 127 | **Implementación** | 2017-07-14 → 2017-07-17 (+3d) |  | 3d → 2d |  | none → 0d |  |
| 128 | **Guías** | 2017-07-14 → 2017-07-17 (+3d) |  | 3d → 2d |  | none → 0d | was named Guía de Usuario |
| 129 | Elaborar Manual de paso a produccion | 2017-07-14 → 2017-07-17 (+3d) | 2017-07-14 → 2017-07-17 (+3d) |  |  |  | was named Elaborar Guía de Instalación |
| 130 | Elaborar Manual de Usuario | 2017-07-15 → 2017-07-17 (+2d) | 2017-07-15 → 2017-07-17 (+2d) |  |  |  | was named Elaborar Manual de Usuario con todos los módulos actualizados |
| 131 | Traspaso de Información | 2017-07-17 → 2017-07-18 (+1d) | 2017-07-17 → 2017-07-18 (+1d) |  |  |  |  |
| 133 | Traspaso de Información | 2017-07-06 → 2017-07-18 (+12d) | 2017-07-06 → 2017-07-18 (+12d) |  |  |  |  |
| 134 | **Inducción de personal** | 2017-06-16 → 2017-07-20 (+34d) | 2017-06-21 → 2017-07-22 (+31d) | 4d → 3d |  |  |  |
| 135 | Establecer personal para inducción | 2017-06-16 → 2017-07-20 (+34d) | 2017-06-16 → 2017-07-20 (+34d) |  |  |  |  |
| 136 | Realizar inducción al personal | 2017-06-17 → 2017-07-21 (+34d) | 2017-06-17 → 2017-07-21 (+34d) |  |  |  |  |
| 137 | Verificar proceso de inducción | 2017-06-19 → 2017-07-21 (+32d) | 2017-06-19 → 2017-07-21 (+32d) |  |  |  |  |
| 138 | Elaborar Certificado de Inducción de Personal | 2017-06-19 → 2017-07-22 (+33d) | 2017-06-19 → 2017-07-22 (+33d) |  |  |  |  |
| 139 | Traspaso de Información | 2017-06-20 → 2017-07-22 (+32d) | 2017-06-20 → 2017-07-22 (+32d) |  |  |  |  |
| 140 | Pasar a área de Desarrollo a Personal Capacitado | 2017-06-21 → 2017-07-22 (+31d) | 2017-06-21 → 2017-07-22 (+31d) |  |  |  |  |
| 141 | **Aseguramiento de la Calidad del Proyecto** | 2017-05-15 → 2017-06-26 (+42d) | 2017-07-19 → 2017-07-01 (-18d) | 48d → 6d |  |  | was named Proceso de Aseguramiento de la Calidad del Proyecto |
| 142 | **Revisión** | 2017-05-15 → 2017-06-26 (+42d) | 2017-05-30 → 2017-06-28 (+29d) | 12d → 3d |  |  | was named Primera Revisión |
| 143 | Elaborar Herramienta de Gestion de Aseguramiento de la Calidad | 2017-05-15 → 2017-06-26 (+42d) | 2017-05-29 → 2017-06-26 (+28d) | 11d → 1d |  |  |  |
| 144 | Elaborar CheckList de Aseguramiento de la Calidad | 2017-05-15 → 2017-06-27 (+43d) | 2017-05-29 → 2017-06-27 (+29d) | 11d → 1d |  |  |  |
| 145 | Traspaso de Información | 2017-05-30 → 2017-06-28 (+29d) | 2017-05-30 → 2017-06-28 (+29d) |  |  |  |  |
| 146 | Elaborar Matriz de Seguimiento del Proyecto | 2017-07-19 → 2017-06-29 (-20d) | 2017-07-19 → 2017-06-29 (-20d) |  |  |  |  |
| 147 | Elaborar Informe de Revisión General del QA | 2017-07-19 → 2017-06-30 (-19d) | 2017-07-19 → 2017-06-30 (-19d) |  |  |  |  |
| 148 | Traspaso de Información | 2017-07-19 → 2017-07-01 (-18d) | 2017-07-19 → 2017-07-01 (-18d) |  |  |  |  |
| 149 | **Reuniones Internas** |  | 2017-07-17 → 2017-07-11 (-6d) | 51d → 56d |  |  |  |
| 154 | Elaborar Acta de Reunión | 2017-05-24 → 2017-05-25 (+1d) | 2017-05-24 → 2017-05-25 (+1d) |  |  |  |  |
| 155 | Traspaso de Información | 2017-05-24 → 2017-05-25 (+1d) | 2017-05-24 → 2017-05-25 (+1d) |  |  |  |  |
| 156 | **Reunión Quincenal 2** | 2017-06-09 → 2017-06-10 (+1d) | 2017-06-09 → 2017-06-10 (+1d) |  |  | none → 0d |  |
| 157 | Elaborar Acta de Reunión | 2017-06-09 → 2017-06-10 (+1d) | 2017-06-09 → 2017-06-10 (+1d) |  |  |  |  |
| 158 | Traspaso de Información | 2017-06-09 → 2017-06-10 (+1d) | 2017-06-09 → 2017-06-10 (+1d) |  |  |  |  |
| 165 | **Reuniones Externas - CLIENTE** |  | 2017-07-20 → 2017-07-19 (-1d) | 42d → 49d |  |  |  |
| 170 | **Segunda Presentación del Proyecto** | 2017-06-22 → 2017-06-19 (-3d) | 2017-06-22 → 2017-06-19 (-3d) |  |  |  |  |
| 171 | Reunión Externa con Profesor | 2017-06-22 → 2017-06-19 (-3d) | 2017-06-22 → 2017-06-19 (-3d) |  |  |  |  |
| 172 | Acta de Reunión con acuerdos tomados | 2017-06-22 → 2017-06-19 (-3d) | 2017-06-22 → 2017-06-19 (-3d) |  |  |  |  |
| 173 | Traspaso de Información | 2017-06-22 → 2017-06-19 (-3d) | 2017-06-22 → 2017-06-19 (-3d) |  |  |  |  |
| 174 | **Tercera Presentación del Proyecto** | 2017-07-20 → 2017-07-19 (-1d) | 2017-07-20 → 2017-07-19 (-1d) |  |  |  |  |
| 175 | Kick Off Meeting con Profesor | 2017-07-20 → 2017-07-19 (-1d) | 2017-07-20 → 2017-07-19 (-1d) |  |  |  |  |
| 176 | Acta de Reunión con acuerdos tomados | 2017-07-20 → 2017-07-19 (-1d) | 2017-07-20 → 2017-07-19 (-1d) |  |  |  |  |
| 177 | Traspaso de Información | 2017-07-20 → 2017-07-19 (-1d) | 2017-07-20 → 2017-07-19 (-1d) |  |  |  |  |

## Version 3 (saved 2017-07-11, file CPROY_V2.0_2017.mpp)

Last finish stays 2017-07-22.

Changed:

| ID | Task | Other |
| --- | --- | --- |
| 106 | Exportar Matricula | was named Visualizacion de Pensiones |

## Version 4 (saved 2017-07-18, file CPROY_V3.0_2017.mpp)

Last finish stays 2017-07-22. Complete tasks 58 → 110.

Removed: 131 Traspaso de Información

Changed:

| ID | Task | Start | Finish | Complete | Total float | Other |
| --- | --- | --- | --- | --- | --- | --- |
| 1 | **Proyecto Matricula.TE** |  |  | 50% → 89% |  |  |
| 68 | **Proceso de Ingeniería** |  | 2017-07-18 A | 31% → 100% | 0d → none |  |
| 69 | **Software Matricula.TE** |  | 2017-07-18 A | 31% → 100% |  |  |
| 91 | **Construcción** | 2017-07-05 A | 2017-07-13 A | 0% → 100% | 0d → none |  |
| 92 | **Modulo Administrativo** | 2017-07-05 A | 2017-07-08 A | 0% → 100% | 0d → none |  |
| 93 | **Construcción de Modulo** | 2017-07-05 A | 2017-07-08 A | 0% → 100% | 0d → none |  |
| 94 | Login | 2017-07-05 A | 2017-07-05 A | 0% → 100% |  |  |
| 95 | Visualizacion de Cursos Disponibles | 2017-07-05 A | 2017-07-06 A | 0% → 100% |  |  |
| 96 | Asignacion de Horarios | 2017-07-06 A | 2017-07-06 A | 0% → 100% |  |  |
| 97 | Emision de Reportes de Notas | 2017-07-07 A | 2017-07-07 A | 0% → 100% |  |  |
| 98 | Emision de Reportes de Matricula | 2017-07-08 A | 2017-07-08 A | 0% → 100% |  |  |
| 99 | Traspaso de Información | 2017-07-08 A | 2017-07-08 A | 0% → 100% |  |  |
| 100 | **Modulo de Alumnos** | 2017-07-10 A | 2017-07-13 A | 0% → 100% | 0d → none |  |
| 101 | **Construcción de Modulo** | 2017-07-10 A | 2017-07-13 A | 0% → 100% | 0d → none |  |
| 102 | Login | 2017-07-10 A | 2017-07-10 A | 0% → 100% |  |  |
| 103 | Visualizacion Cursos Disponibles | 2017-07-10 A | 2017-07-11 A | 0% → 100% |  |  |
| 104 | Selección de Cursos | 2017-07-11 A | 2017-07-11 A | 0% → 100% |  |  |
| 105 | Emision de reportes de Notas | 2017-07-12 A | 2017-07-12 A | 0% → 100% |  |  |
| 106 | Exportar Matricula | 2017-07-13 A | 2017-07-13 A | 0% → 100% |  |  |
| 107 | Traspaso de Información | 2017-07-13 A | 2017-07-13 A | 0% → 100% |  |  |
| 108 | Actualizar Matriz de Trazabilidad de Requerimientos | 2017-07-13 A | 2017-07-13 A | 0% → 100% |  |  |
| 109 | Traspaso de Información | 2017-07-13 A | 2017-07-13 A | 0% → 100% |  |  |
| 110 | **Pruebas** | 2017-07-14 A | 2017-07-17 A | 0% → 100% | 0d → none |  |
| 111 | **Pruebas Funcionales** | 2017-07-14 A | 2017-07-14 A | 0% → 100% | 0d → none |  |
| 112 | **Modulo de Matricula** | 2017-07-14 A | 2017-07-14 A | 0% → 100% | 0d → none |  |
| 113 | Elaborar Prueba funcional del Modulo | 2017-07-14 A | 2017-07-14 A | 0% → 100% |  |  |
| 114 | Elaborar Informe de Prueba | 2017-07-14 A | 2017-07-14 A | 0% → 100% |  |  |
| 115 | Traspaso de Información | 2017-07-14 A | 2017-07-14 A | 0% → 100% |  |  |
| 116 | **Modulo de Emision de Estado** | 2017-07-14 A | 2017-07-14 A | 0% → 100% | 0d → none |  |
| 117 | Elaborar Prueba funcional de Modulo | 2017-07-14 A | 2017-07-14 A | 0% → 100% |  |  |
| 118 | Elaborar Informe de Prueba | 2017-07-14 A | 2017-07-14 A | 0% → 100% |  |  |
| 119 | Traspaso de Información | 2017-07-14 A | 2017-07-14 A | 0% → 100% |  |  |
| 120 | **Pruebas de Sistema** | 2017-07-15 A | 2017-07-15 A | 0% → 100% | 0d → none |  |
| 121 | Elaborar Pruebas de Sistema | 2017-07-15 A | 2017-07-15 A | 0% → 100% | 2d → none |  |
| 122 | Elaborar Informe de Prueba | 2017-07-15 A | 2017-07-15 A | 0% → 100% |  |  |
| 123 | Traspaso de Información | 2017-07-15 A | 2017-07-15 A | 0% → 100% |  |  |
| 124 | Elaborar Manual de Sistema | 2017-07-17 A | 2017-07-17 A | 0% → 100% |  |  |
| 125 | Elaborar Matriz de Trazabilidad de Requerimientos Final | 2017-07-17 A | 2017-07-17 A | 0% → 100% |  |  |
| 126 | Traspaso de Información | 2017-07-17 A | 2017-07-17 A | 0% → 100% |  |  |
| 127 | **Implementación** | 2017-07-17 A | 2017-07-18 A | 0% → 100% | 0d → none |  |
| 128 | **Guías** | 2017-07-17 A | 2017-07-18 A | 0% → 100% | 0d → none |  |
| 129 | Elaborar Manual de paso a produccion | 2017-07-17 A | 2017-07-17 A | 0% → 100% |  |  |
| 130 | Elaborar Manual de Usuario | 2017-07-17 A | 2017-07-17 A | 0% → 100% |  | resources Salinas → Chira |
| 131 | Elaborar Guia de Instalacion | 2017-07-18 A | 2017-07-18 A | 0% → 100% |  | was named Elaborar Plan de Implementación; resources Salinas → Huaroto |
| 132 | Traspaso de Información | 2017-07-18 A | 2017-07-18 A | 0% → 100% |  |  |
| 140 | **Aseguramiento de la Calidad del Proyecto** | 2017-06-26 A | 2017-07-01 A | 0% → 100% | 0d → none |  |
| 141 | **Revisión** | 2017-06-26 A | 2017-06-28 A | 0% → 100% | 0d → none |  |
| 142 | Elaborar Herramienta de Gestion de Aseguramiento de la Calidad | 2017-06-26 A | 2017-06-26 A | 0% → 100% |  |  |
| 143 | Elaborar CheckList de Aseguramiento de la Calidad | 2017-06-27 A | 2017-06-27 A | 0% → 100% |  |  |
| 144 | Traspaso de Información | 2017-06-28 A | 2017-06-28 A | 0% → 100% |  |  |
| 145 | Elaborar Matriz de Seguimiento del Proyecto | 2017-06-29 A | 2017-06-29 A | 0% → 100% |  |  |
| 146 | Elaborar Informe de Revisión General del QA | 2017-06-30 A | 2017-06-30 A | 0% → 100% |  |  |
| 147 | Traspaso de Información | 2017-07-01 A | 2017-07-01 A | 0% → 100% |  |  |
| 148 | **Reuniones Internas** | 2017-05-08 A | 2017-07-11 A | 0% → 100% | 0d → none |  |
| 149 | **Reunión Inicial** | 2017-05-08 A | 2017-05-08 A | 0% → 100% | 0d → none |  |
| 150 | Elaborar Acta de Reunión | 2017-05-08 A | 2017-05-08 A | 0% → 100% |  |  |
| 151 | Traspaso de Información | 2017-05-08 A | 2017-05-08 A | 0% → 100% |  |  |
| 152 | **Reunión Quincenal 1** | 2017-05-25 A | 2017-05-25 A | 0% → 100% | 0d → none |  |
| 153 | Elaborar Acta de Reunión | 2017-05-25 A | 2017-05-25 A | 0% → 100% |  |  |
| 154 | Traspaso de Información | 2017-05-25 A | 2017-05-25 A | 0% → 100% |  |  |
| 155 | **Reunión Quincenal 2** | 2017-06-10 A | 2017-06-10 A | 0% → 100% | 0d → none |  |
| 156 | Elaborar Acta de Reunión | 2017-06-10 A | 2017-06-10 A | 0% → 100% |  |  |
| 157 | Traspaso de Información | 2017-06-10 A | 2017-06-10 A | 0% → 100% |  |  |
| 158 | **Reunión Quincenal 3** | 2017-06-26 A | 2017-06-26 A | 0% → 100% | 0d → none |  |
| 159 | Elaborar Acta de Reunión | 2017-06-26 A | 2017-06-26 A | 0% → 100% |  |  |
| 160 | Traspaso de Información | 2017-06-26 A | 2017-06-26 A | 0% → 100% |  |  |
| 161 | **Reunión Quincenal 4** | 2017-07-11 A | 2017-07-11 A | 0% → 100% | 0d → none |  |
| 162 | Elaborar Acta de Reunión | 2017-07-11 A | 2017-07-11 A | 0% → 100% |  |  |
| 163 | Traspaso de Información | 2017-07-11 A | 2017-07-11 A | 0% → 100% |  |  |
| 164 | **Reuniones Externas - CLIENTE** | 2017-05-24 A |  | 0% → 67% |  |  |

| ID | Task | Start | Finish | Complete | Total float |
| --- | --- | --- | --- | --- | --- |
| 165 | **Primera Presentación del Proyecto** | 2017-05-24 A | 2017-05-24 A | 0% → 100% | 0d → none |
| 166 | Reunión Externa con Profesor | 2017-05-24 A | 2017-05-24 A | 0% → 100% |  |
| 167 | Acta de Reunión con acuerdos tomados | 2017-05-24 A | 2017-05-24 A | 0% → 100% |  |
| 168 | Traspaso de Información | 2017-05-24 A | 2017-05-24 A | 0% → 100% |  |
| 169 | **Segunda Presentación del Proyecto** | 2017-06-19 A | 2017-06-19 A | 0% → 100% | 0d → none |
| 170 | Reunión Externa con Profesor | 2017-06-19 A | 2017-06-19 A | 0% → 100% |  |
| 171 | Acta de Reunión con acuerdos tomados | 2017-06-19 A | 2017-06-19 A | 0% → 100% |  |
| 172 | Traspaso de Información | 2017-06-19 A | 2017-06-19 A | 0% → 100% |  |

## Version 5 (saved 2017-07-18, file CPROY_V3.0_2017.mpp)

Last finish stays 2017-07-22.

Changed:

| ID | Task | Other |
| --- | --- | --- |
| 95 | Registro de Alumno | was named Visualizacion de Cursos Disponibles |

## Version 6 (saved 2017-07-19, file CPROY_V3.0_2017.mpp)

Last finish stays 2017-07-22.

Changed:

| ID | Task | Other |
| --- | --- | --- |
| 129 | Elaborar Documento de pase QA-Produccion | was named Elaborar Manual de paso a produccion |
